# GoldenDB适配

Schedule from a web Gantt chart, 2025-08-22 to 2025-12-01.
Saturdays and Sundays are off

## Schedule

| ID | WBS | Task | Type | Duration | Start | Finish | Complete | Status |
| --- | --- | --- | --- | --- | --- | --- | --- | --- |
| 2 | 1 | **金达测试环境适配** | fixed start | 39d | 2025-08-22 | 2025-10-15 | 100% |  |
| 3 | 1.1 | GDC协助金达测试环境适配 |  | 23d | 2025-08-22 | 2025-09-23 | 100% | done |
| 4 | 1.2 | 国菱程序JDBC及SQL库表适配 |  | 23d | 2025-08-22 | 2025-09-23 | 100% | done |
| 5 | 2 | 慢Sql调优 | fixed start | 31d | 2025-10-15 | 2025-11-26 | 100% | done |
| 6 | 3 | **提出Dblink及异构数据库同步问题** | fixed start | 59d | 2025-09-10 | 2025-12-01 | 72% |  |
| 7 | 3.1 | 数据同步讨论方案 |  | 26d | 2025-09-10 | 2025-10-15 | 100% | done |
| 8 | 3.2 | **数据同步SLOTH方案，问题及目标** |  | 34d | 2025-10-15 | 2025-12-01 | 59% |  |
| 9 | 3.2.1 | GDB协助金达环境安装Sloth Sqlserver环境 |  | 7d | 2025-10-15 | 2025-10-23 | 100% | done |
| 10 | 3.2.2 | GDB协助金达进行数据同步可行性验证测试 |  | 13d | 2025-10-15 | 2025-10-31 | 100% | done |
| 11 | 3.2.3 | 同步性能问题 |  | 4d | 2025-11-03 | 2025-11-06 | 100% | done |
| 12 | 3.2.4 | 数据同步异常告警问题 |  | 34d | 2025-10-15 | 2025-12-01 | 30% |  |
| 13 | 4 | **Sloth院内测试环境测试** | fixed start | 18d | 2025-11-06 | 2025-12-01 | 98% |  |
| 14 | 4.1 | Sqlserver测试环境 |  | 6d | 2025-11-06 | 2025-11-13 | 100% | done |
| 15 | 4.2 | Sloth环境准备 |  | 16d | 2025-11-06 | 2025-11-27 | 100% | done |
| 16 | 4.3 | Sloth同步测试验证 |  | 3d | 2025-11-27 | 2025-12-01 | 80% |  |

Notes:
- 2: GDB的组件构成，安装模式，备份机制，运维客户端，版本关键字，硬件资源等相关问题
- 3: GDB的组件构成，安装模式，备份机制，运维客户端，版本关键字，硬件资源等相关问题
- 5: 优先级较低，稍滞后完成
- 8: 会议后待办事项： 1、在金达公司内部搭建测试环境（包括老物资库的测试库、迁移工具SLOTH环境） @yang 1）老物资库的测试库配置：16C/32G/300G windows server 2019 DATACENTER 2）SLOTH环境：16c/32G 2、提供需要双向同步的表名 @yang 3、协调朱老师在院内搭建老物资库的测试库 @王一凡 cc @所有人
- 12: 需Sloth端发生异常后，进行推送异常信息。技术方案已确定。
